# elaboration_project_plan

Schedule from MS Project, 2007-03-01 to 2007-10-01.
Duke University

## Calendars

- Standard: Mon-Fri 08:00-12:00, 13:00-17:00; Sat-Sun off.

## Resources

| Resource |
| --- |
| Patrick |
| Ram |
| Elaborators |
| PriyatamElaborators |
| Development team |
| Pri |
| Priyatam |
| Ramakrishna |
| Kruttik |
| Manav |
| Developers |
| Development teatm |
| BAH |
| Adopters |
| Pryatam |
| Kula |

## Schedule

| ID | WBS | Task | Type | Duration | Start | Finish | Predecessors | Total slack | Free slack | Constraint | Resources | Work |
| --- | --- | --- | --- | --- | --- | --- | --- | --- | --- | --- | --- | --- |
| 1 | 1 | **Iteration 1 (eligibility, study personnel, registration management, multi-site study)** |  | 46d | 2007-03-01 | 2007-05-03 |  | 106d |  |  |  | 20672h |
| 2 | 1.1 | Iteration start | milestone | 0d | 2007-03-01 | 2007-03-01 |  | 106d | 0d | start no earlier than 2007-03-01 |  |  |
| 3 | 1.2 | **Project Management** |  | 30d | 2007-03-01 | 2007-04-11 | 2 | 122d |  |  | Patrick; Adopters; BAH | 2640h |
| 4 | 1.2.1 | **Draft project plan (task 1.1)** |  | 30d | 2007-03-01 | 2007-04-11 |  | 122d |  |  | Patrick; Adopters; BAH | 960h |
| 5 | 1.2.1.1 | Developer draft |  | 5d | 2007-03-01 | 2007-03-07 |  | 150d | 0d |  | Patrick | 40h |
| 6 | 1.2.1.2 | BAH review |  | 5d | 2007-03-08 | 2007-03-14 | 5 | 150d | 0d |  | BAH | 40h |
| 7 | 1.2.1.3 | Developer update |  | 5d | 2007-03-15 | 2007-03-21 | 6 | 150d | 0d |  | Patrick | 40h |
| 8 | 1.2.1.4 | Adopter review |  | 3d | 2007-03-22 | 2007-03-26 | 7 | 150d | 0d |  | Adopters | 24h |
| 9 | 1.2.1.5 | Developer update |  | 2d | 2007-03-27 | 2007-03-28 | 8 | 150d | 0d |  | Patrick | 16h |
| 10 | 1.2.1.6 | Deliver project plan to BAH (task 1.1) | milestone | 0d | 2007-03-28 | 2007-03-28 | 9 | 150d | 0d |  | Patrick |  |
| 11 | 1.2.1.7 | BAH review project plan (task 1.1) |  | 10d | 2007-03-29 | 2007-04-11 | 10 | 150d |  |  | BAH | 80h |
| 12 | 1.2.2 | **Update risk matrix (task 1.3.1)** |  | 20d | 2007-03-01 | 2007-03-28 |  | 122d |  |  | Patrick; BAH | 480h |
| 13 | 1.2.2.1 | Update risk matrix for week 1 |  | 5d | 2007-03-01 | 2007-03-07 |  | 150d | 0d |  | Patrick | 40h |
| 14 | 1.2.2.2 | Update risk matrix for week 2 |  | 5d | 2007-03-08 | 2007-03-14 | 13 | 150d | 0d |  | Patrick | 40h |
| 15 | 1.2.2.3 | Deliver risk matrix to BAH (task 1.3.1) | milestone | 0d | 2007-03-14 | 2007-03-14 | 14 | 150d | 0d |  | Patrick |  |
| 16 | 1.2.2.4 | BAH review risk matrix (task 1.3.1) |  | 10d | 2007-03-15 | 2007-03-28 | 15 | 160d |  |  | BAH | 80h |
| 17 | 1.2.3 | **Monthly report (task 1.3.1)** |  | 20d | 2007-03-15 | 2007-04-11 | 15 | 122d |  |  | Patrick; BAH | 480h |
| 18 | 1.2.3.1 | Update risk matrix for week 3 |  | 5d | 2007-03-15 | 2007-03-21 |  | 150d | 0d |  | Patrick | 40h |
| 19 | 1.2.3.2 | Update risk matrix for week 4 |  | 5d | 2007-03-22 | 2007-03-28 | 18 | 150d | 0d |  | Patrick | 40h |
| 20 | 1.2.3.3 | Deliver monthly report and risk matrix to BAH (task 1.3.1) | milestone | 0d | 2007-03-28 | 2007-03-28 | 19 | 150d | 0d |  | Patrick |  |
| 21 | 1.2.3.4 | BAH review monthly report and risk matrix (task 1.3.1) |  | 10d | 2007-03-29 | 2007-04-11 | 20 | 150d |  |  | BAH | 80h |
| 22 | 1.3 | **Requirements and use cases** |  | 32d | 2007-03-01 | 2007-04-13 | 2 | 106d |  |  | Developers; Adopters; BAH | 4048h |
| 23 | 1.3.1 | **Create level 1 use cases and requirements** |  | 4d | 2007-03-01 | 2007-03-06 |  | 106d | 0d |  | Developers | 288h |
| 24 | 1.3.1.1 | **Level 1 use cases for eligibility** |  | 2d | 2007-03-01 | 2007-03-02 |  | 108d |  |  | Kruttik; Priyatam | 64h |
| 25 | 1.3.1.1.1 | Use case document (task 3.1.1) |  | 1d | 2007-03-01 | 2007-03-01 |  | 121d | 0d |  | Kruttik; Priyatam | 16h |
| 26 | 1.3.1.1.2 | Requirements document (3.2.1) |  | 1d | 2007-03-02 | 2007-03-02 | 25 | 121d |  |  | Kruttik; Priyatam | 16h |

| ID | WBS | Task | Duration | Start | Finish | Predecessors | Total slack | Free slack | Resources | Work |
| --- | --- | --- | --- | --- | --- | --- | --- | --- | --- | --- |
| 27 | 1.3.1.2 | **Level 1 use cases for study personnel** | 2d | 2007-03-01 | 2007-03-02 |  | 108d |  | Priyatam; Kula | 64h |
| 28 | 1.3.1.2.1 | Use case document (task 3.1.1) | 1d | 2007-03-01 | 2007-03-01 |  | 121d | 0d | Priyatam; Kula | 16h |
| 29 | 1.3.1.2.2 | Requirements document (3.2.1) | 1d | 2007-03-02 | 2007-03-02 | 28 | 121d |  | Priyatam; Kula | 16h |
| 30 | 1.3.1.3 | **Level 1 use cases for registration management** | 2d | 2007-03-01 | 2007-03-02 |  | 108d |  | Ramakrishna | 32h |
| 31 | 1.3.1.3.1 | Use case document (task 3.1.1) | 1d | 2007-03-01 | 2007-03-01 |  | 121d | 0d | Ramakrishna | 8h |
| 32 | 1.3.1.3.2 | Requirements document (3.2.1) | 1d | 2007-03-02 | 2007-03-02 | 31 | 121d |  | Ramakrishna | 8h |
| 33 | 1.3.1.4 | **Level 1 use cases for multi-site study** | 4d | 2007-03-01 | 2007-03-06 |  | 106d |  | Manav | 64h |
| 34 | 1.3.1.4.1 | Use case document (task 3.1.1) | 2d | 2007-03-01 | 2007-03-02 |  | 119d | 0d | Manav | 16h |
| 35 | 1.3.1.4.2 | Requirements document (3.2.1) | 2d | 2007-03-05 | 2007-03-06 | 34 | 119d |  | Manav | 16h |
| 36 | 1.3.1.5 | **Level 1 use cases for C3D integration** | 2d | 2007-03-01 | 2007-03-02 |  | 108d |  | Manav | 32h |
| 37 | 1.3.1.5.1 | Use case document (task 3.1.1) | 1d | 2007-03-01 | 2007-03-01 |  | 121d | 0d | Manav | 8h |
| 38 | 1.3.1.5.2 | Requirements document (3.2.1) | 1d | 2007-03-02 | 2007-03-02 | 37 | 121d |  | Manav | 8h |
| 39 | 1.3.2 | **Update use case document (task 3.1.1, task 5.2.1)** | 9d | 2007-03-07 | 2007-03-19 | 23 | 120d | 0d | Developers; Adopters | 1416h |
| 40 | 1.3.2.1 | **Update eligibility use cases** | 9d | 2007-03-07 | 2007-03-19 |  | 120d |  | Kruttik; Adopters; Priyatam | 312h |
| 41 | 1.3.2.1.1 | Developer update | 2d | 2007-03-07 | 2007-03-08 |  | 120d | 0d | Kruttik; Priyatam | 32h |
| 42 | 1.3.2.1.2 | Adopter review | 5d | 2007-03-09 | 2007-03-15 | 41 | 120d | 0d | Adopters | 40h |
| 43 | 1.3.2.1.3 | Developer update | 1d | 2007-03-16 | 2007-03-16 | 42 | 120d | 0d | Kruttik; Priyatam | 16h |
| 44 | 1.3.2.1.4 | Adopter sign-off | 1d | 2007-03-19 | 2007-03-19 | 43 | 120d |  | Adopters | 8h |
| 45 | 1.3.2.2 | **Update study personnel use cases** | 9d | 2007-03-07 | 2007-03-19 |  | 120d |  | Priyatam; Adopters; Kula | 312h |
| 46 | 1.3.2.2.1 | Developer update | 2d | 2007-03-07 | 2007-03-08 |  | 120d | 0d | Priyatam; Kula | 32h |
| 47 | 1.3.2.2.2 | Adopter review | 5d | 2007-03-09 | 2007-03-15 | 46 | 120d | 0d | Adopters | 40h |
| 48 | 1.3.2.2.3 | Developer update | 1d | 2007-03-16 | 2007-03-16 | 47 | 120d | 0d | Priyatam; Kula | 16h |
| 49 | 1.3.2.2.4 | Adopter sign-off | 1d | 2007-03-19 | 2007-03-19 | 48 | 120d |  | Adopters | 8h |
| 50 | 1.3.2.3 | **Update registration management use cases** | 9d | 2007-03-07 | 2007-03-19 |  | 120d |  | Ramakrishna; Adopters | 216h |
| 51 | 1.3.2.3.1 | Developer update | 2d | 2007-03-07 | 2007-03-08 |  | 120d | 0d | Ramakrishna | 16h |
| 52 | 1.3.2.3.2 | Adopter review | 5d | 2007-03-09 | 2007-03-15 | 51 | 120d | 0d | Adopters | 40h |
| 53 | 1.3.2.3.3 | Developer update | 1d | 2007-03-16 | 2007-03-16 | 52 | 120d | 0d | Ramakrishna | 8h |
| 54 | 1.3.2.3.4 | Adopter sign-off | 1d | 2007-03-19 | 2007-03-19 | 53 | 120d |  | Adopters | 8h |

| ID | WBS | Task | Duration | Start | Finish | Predecessors | Total slack | Free slack | Resources | Work |
| --- | --- | --- | --- | --- | --- | --- | --- | --- | --- | --- |
| 55 | 1.3.2.4 | **Update multi-site trial use cases** | 9d | 2007-03-07 | 2007-03-19 |  | 120d |  | Manav; Adopters | 216h |
| 56 | 1.3.2.4.1 | Developer update | 2d | 2007-03-07 | 2007-03-08 |  | 120d | 0d | Manav | 16h |
| 57 | 1.3.2.4.2 | Adopter review | 5d | 2007-03-09 | 2007-03-15 | 56 | 120d | 0d | Adopters | 40h |
| 58 | 1.3.2.4.3 | Developer update | 1d | 2007-03-16 | 2007-03-16 | 57 | 120d | 0d | Manav | 8h |
| 59 | 1.3.2.4.4 | Adopter sign-off | 1d | 2007-03-19 | 2007-03-19 | 58 | 120d |  | Adopters | 8h |
| 60 | 1.3.2.5 | **Update C3D integration use cases** | 9d | 2007-03-07 | 2007-03-19 |  | 120d |  | Manav; Adopters | 216h |
| 61 | 1.3.2.5.1 | Developer update | 2d | 2007-03-07 | 2007-03-08 |  | 120d | 0d | Manav | 16h |
| 62 | 1.3.2.5.2 | Adopter review | 5d | 2007-03-09 | 2007-03-15 | 61 | 120d | 0d | Adopters | 40h |
| 63 | 1.3.2.5.3 | Developer update | 1d | 2007-03-16 | 2007-03-16 | 62 | 120d | 0d | Manav | 8h |
| 64 | 1.3.2.5.4 | Adopter sign-off | 1d | 2007-03-19 | 2007-03-19 | 63 | 120d |  | Adopters | 8h |
| 65 | 1.3.3 | **Update requirements document (task 3.2.1, task 5.3.1)** | 9d | 2007-03-20 | 2007-03-30 | 39 | 120d | 0d | Developers; Adopters | 1416h |
| 66 | 1.3.3.1 | **Update eligibility requirements** | 9d | 2007-03-20 | 2007-03-30 |  | 120d |  | Kruttik; Priyatam; Adopters | 312h |
| 67 | 1.3.3.1.1 | Developer update | 2d | 2007-03-20 | 2007-03-21 |  | 120d | 0d | Kruttik; Priyatam | 32h |
| 68 | 1.3.3.1.2 | Adopter review | 5d | 2007-03-22 | 2007-03-28 | 67 | 120d | 0d | Adopters | 40h |
| 69 | 1.3.3.1.3 | Developer update | 1d | 2007-03-29 | 2007-03-29 | 68 | 120d | 0d | Kruttik; Priyatam | 16h |
| 70 | 1.3.3.1.4 | Adopter sign-off | 1d | 2007-03-30 | 2007-03-30 | 69 | 120d |  | Adopters | 8h |
| 71 | 1.3.3.2 | **Update study personel requirements** | 9d | 2007-03-20 | 2007-03-30 |  | 120d |  | Priyatam; Adopters; Kula | 312h |
| 72 | 1.3.3.2.1 | Developer update | 2d | 2007-03-20 | 2007-03-21 |  | 120d | 0d | Priyatam; Kula | 32h |
| 73 | 1.3.3.2.2 | Adopter review | 5d | 2007-03-22 | 2007-03-28 | 72 | 120d | 0d | Adopters | 40h |
| 74 | 1.3.3.2.3 | Developer update | 1d | 2007-03-29 | 2007-03-29 | 73 | 120d | 0d | Priyatam; Kula | 16h |
| 75 | 1.3.3.2.4 | Adopter sign-off | 1d | 2007-03-30 | 2007-03-30 | 74 | 120d |  | Adopters | 8h |
| 76 | 1.3.3.3 | **Update registration management requirements** | 9d | 2007-03-20 | 2007-03-30 |  | 120d |  | Ramakrishna; Adopters | 216h |
| 77 | 1.3.3.3.1 | Developer update | 2d | 2007-03-20 | 2007-03-21 |  | 120d | 0d | Ramakrishna | 16h |
| 78 | 1.3.3.3.2 | Adopter review | 5d | 2007-03-22 | 2007-03-28 | 77 | 120d | 0d | Adopters | 40h |
| 79 | 1.3.3.3.3 | Developer update | 1d | 2007-03-29 | 2007-03-29 | 78 | 120d | 0d | Ramakrishna | 8h |
| 80 | 1.3.3.3.4 | Adopter sign-off | 1d | 2007-03-30 | 2007-03-30 | 79 | 120d |  | Adopters | 8h |

| ID | WBS | Task | Type | Duration | Start | Finish | Predecessors | Total slack | Free slack | Resources | Work |
| --- | --- | --- | --- | --- | --- | --- | --- | --- | --- | --- | --- |
| 81 | 1.3.3.4 | **Update multi-site trial requirements** |  | 9d | 2007-03-20 | 2007-03-30 |  | 120d |  | Manav; Adopters | 216h |
| 82 | 1.3.3.4.1 | Developer update |  | 2d | 2007-03-20 | 2007-03-21 |  | 120d | 0d | Manav | 16h |
| 83 | 1.3.3.4.2 | Adopter review |  | 5d | 2007-03-22 | 2007-03-28 | 82 | 120d | 0d | Adopters | 40h |
| 84 | 1.3.3.4.3 | Developer update |  | 1d | 2007-03-29 | 2007-03-29 | 83 | 120d | 0d | Manav | 8h |
| 85 | 1.3.3.4.4 | Adopter sign-off |  | 1d | 2007-03-30 | 2007-03-30 | 84 | 120d |  | Adopters | 8h |
| 86 | 1.3.3.5 | **Update C3D integration requirements** |  | 9d | 2007-03-20 | 2007-03-30 |  | 120d |  | Manav; Adopters | 216h |
| 87 | 1.3.3.5.1 | Developer update |  | 2d | 2007-03-20 | 2007-03-21 |  | 120d | 0d | Manav | 16h |
| 88 | 1.3.3.5.2 | Adopter review |  | 5d | 2007-03-22 | 2007-03-28 | 87 | 120d | 0d | Adopters | 40h |
| 89 | 1.3.3.5.3 | Developer update |  | 1d | 2007-03-29 | 2007-03-29 | 88 | 120d | 0d | Manav | 8h |
| 90 | 1.3.3.5.4 | Adopter sign-off |  | 1d | 2007-03-30 | 2007-03-30 | 89 | 120d |  | Adopters | 8h |
| 91 | 1.3.4 | Developer deliver use case document to BAH (task 3.1.1, task 5.2.1) | milestone | 0d | 2007-03-30 | 2007-03-30 | 65 | 120d | 0d | Patrick |  |
| 92 | 1.3.5 | BAH review use case document (task 3.1.1, task 5.2.1) |  | 10d | 2007-04-02 | 2007-04-13 | 91 | 120d |  | BAH | 80h |
| 93 | 1.3.6 | Developer deliver requirements document to BAH (task 3.2.1, task 5.3.1) | milestone | 0d | 2007-03-30 | 2007-03-30 | 65 | 120d | 0d | Patrick |  |
| 94 | 1.3.7 | BAH review requirements document (task 3.2.1, task 5.3.1) |  | 10d | 2007-04-02 | 2007-04-13 | 93 | 120d |  | BAH | 80h |
| 95 | 1.4 | **Analysis and Design** |  | 42d | 2007-03-07 | 2007-05-03 | 23, 2 | 106d |  | Developers; Adopters; BAH | 4800h |
| 96 | 1.4.1 | **Perform level 1 design** |  | 2d | 2007-03-07 | 2007-03-08 |  | 106d | 0d | Developers | 48h |
| 97 | 1.4.1.1 | Cursory BRIDG harmonization |  | 1d | 2007-03-07 | 2007-03-07 |  | 115d | 0d | Developers | 8h |
| 98 | 1.4.1.2 | Update implementation model |  | 1d | 2007-03-08 | 2007-03-08 | 97 | 115d |  | Developers | 8h |
| 99 | 1.4.1.3 | Cursory system design |  | 2d | 2007-03-07 | 2007-03-08 |  | 115d |  | Developers | 16h |
| 100 | 1.4.2 | **Modeling (task 3.3.1)** |  | 27d | 2007-03-09 | 2007-04-16 | 96 | 119d |  | Developers; Adopters | 1104h |
| 101 | 1.4.2.1 | **Update model** |  | 6d | 2007-03-09 | 2007-03-16 |  | 119d | 0d | Developers | 264h |
| 102 | 1.4.2.1.1 | **BRIDG harmonization** |  | 3d | 2007-03-09 | 2007-03-13 | 96 | 119d | 0d |  | 96h |
| 103 | 1.4.2.1.1.1 | Harmonize Study model |  | 2d | 2007-03-09 | 2007-03-12 |  | 120d |  | Kruttik; Priyatam; Manav | 48h |
| 104 | 1.4.2.1.1.2 | Harmonize Personnel model |  | 3d | 2007-03-09 | 2007-03-13 |  | 119d |  | Ramakrishna | 24h |
| 105 | 1.4.2.1.1.3 | Harmonize Multi-site Study model |  | 3d | 2007-03-09 | 2007-03-13 |  | 119d |  | Manav | 24h |

| ID | WBS | Task | Type | Duration | Start | Finish | Predecessors | Total slack | Free slack | Resources | Work |
| --- | --- | --- | --- | --- | --- | --- | --- | --- | --- | --- | --- |
| 106 | 1.4.2.1.2 | **Model implementation** |  | 3d | 2007-03-14 | 2007-03-16 | 102 | 119d |  |  | 120h |
| 107 | 1.4.2.1.2.1 | Implement Study model |  | 3d | 2007-03-14 | 2007-03-16 |  | 119d |  | Kruttik; Priyatam; Manav | 72h |
| 108 | 1.4.2.1.2.2 | Implement Personnel model |  | 3d | 2007-03-14 | 2007-03-16 |  | 119d |  | Ramakrishna | 24h |
| 109 | 1.4.2.1.2.3 | Implement Multi-site Study model |  | 3d | 2007-03-14 | 2007-03-16 |  | 119d |  | Manav | 24h |
| 110 | 1.4.2.2 | Adopter review |  | 5d | 2007-03-19 | 2007-03-23 | 101 | 119d | 0d | Adopters | 40h |
| 111 | 1.4.2.3 | **Update model** |  | 6d | 2007-03-26 | 2007-04-02 | 110 | 119d | 0d | Developers | 288h |
| 112 | 1.4.2.3.1 | **BRIDG harmonization** |  | 3d | 2007-03-26 | 2007-03-28 | 110 | 119d | 0d |  | 120h |
| 113 | 1.4.2.3.1.1 | Harmonize Study model |  | 3d | 2007-03-26 | 2007-03-28 |  | 119d |  | Kruttik; Priyatam; Manav | 72h |
| 114 | 1.4.2.3.1.2 | Harmonize Personnel model |  | 3d | 2007-03-26 | 2007-03-28 |  | 119d |  | Ramakrishna | 24h |
| 115 | 1.4.2.3.1.3 | Harmonize Multi-site Study model |  | 3d | 2007-03-26 | 2007-03-28 |  | 119d |  | Manav | 24h |
| 116 | 1.4.2.3.2 | **Model implementation** |  | 3d | 2007-03-29 | 2007-04-02 | 112 | 119d |  |  | 120h |
| 117 | 1.4.2.3.2.1 | Implement Study model |  | 3d | 2007-03-29 | 2007-04-02 |  | 119d |  | Kruttik; Priyatam; Manav | 72h |
| 118 | 1.4.2.3.2.2 | Implement Personnel model |  | 3d | 2007-03-29 | 2007-04-02 |  | 119d |  | Ramakrishna | 24h |
| 119 | 1.4.2.3.2.3 | Implement Multi-site Study model |  | 3d | 2007-03-29 | 2007-04-02 |  | 119d |  | Manav | 24h |
| 120 | 1.4.2.4 | Developer deliver UML to BAH (task 3.3.1) | milestone | 0d | 2007-04-02 | 2007-04-02 | 111 | 119d | 0d | Patrick |  |
| 121 | 1.4.2.5 | BAH review of UML (task 3.3.1) |  | 10d | 2007-04-03 | 2007-04-16 | 120 | 119d |  | BAH | 80h |
| 122 | 1.4.3 | **System design (task 3.4.1)** |  | 40d | 2007-03-09 | 2007-05-03 | 96 | 106d |  | Developers; BAH | 2400h |
| 123 | 1.4.3.1 | **Design eligibility** |  | 15d | 2007-03-09 | 2007-03-29 |  | 121d | 15d | Kruttik; Priyatam | 480h |
| 124 | 1.4.3.1.1 | Draft UML |  | 5d | 2007-03-09 | 2007-03-15 |  | 121d | 0d | Kruttik; Priyatam | 80h |
| 125 | 1.4.3.1.2 | Team review |  | 5d | 2007-03-16 | 2007-03-22 | 124 | 121d | 0d | Kruttik; Priyatam | 80h |
| 126 | 1.4.3.1.3 | Update design document |  | 5d | 2007-03-23 | 2007-03-29 | 125 | 121d |  | Kruttik; Priyatam | 80h |
| 127 | 1.4.3.2 | **Design personnel** |  | 15d | 2007-03-09 | 2007-03-29 |  | 121d | 15d | Priyatam; Kula | 480h |
| 128 | 1.4.3.2.1 | Draft UML |  | 5d | 2007-03-09 | 2007-03-15 |  | 121d | 0d | Priyatam; Kula | 80h |
| 129 | 1.4.3.2.2 | Team review |  | 5d | 2007-03-16 | 2007-03-22 | 128 | 121d | 0d | Priyatam; Kula | 80h |
| 130 | 1.4.3.2.3 | Update design document |  | 5d | 2007-03-23 | 2007-03-29 | 129 | 121d |  | Priyatam; Kula | 80h |

| ID | WBS | Task | Type | Duration | Start | Finish | Predecessors | Total slack | Free slack | Resources | Work |
| --- | --- | --- | --- | --- | --- | --- | --- | --- | --- | --- | --- |
| 131 | 1.4.3.3 | **Design registration management** |  | 15d | 2007-03-09 | 2007-03-29 |  | 131d |  | Ramakrishna | 240h |
| 132 | 1.4.3.3.1 | Draft UML |  | 5d | 2007-03-09 | 2007-03-15 |  | 131d | 0d | Ramakrishna | 40h |
| 133 | 1.4.3.3.2 | Team review |  | 5d | 2007-03-16 | 2007-03-22 | 132 | 131d | 0d | Ramakrishna | 40h |
| 134 | 1.4.3.3.3 | Update design document |  | 5d | 2007-03-23 | 2007-03-29 | 133 | 131d |  | Ramakrishna | 40h |
| 135 | 1.4.3.4 | **Design multi-site study** |  | 15d | 2007-03-09 | 2007-03-29 |  | 106d | 0d | Manav | 240h |
| 136 | 1.4.3.4.1 | Draft UML |  | 5d | 2007-03-09 | 2007-03-15 |  | 106d | 0d | Manav | 40h |
| 137 | 1.4.3.4.2 | Team review |  | 5d | 2007-03-16 | 2007-03-22 | 136 | 106d | 0d | Manav | 40h |
| 138 | 1.4.3.4.3 | Update design document |  | 5d | 2007-03-23 | 2007-03-29 | 137 | 106d |  | Manav | 40h |
| 139 | 1.4.3.5 | **Design C3D integration** |  | 15d | 2007-03-30 | 2007-04-19 | 135 | 106d | 0d | Manav | 240h |
| 140 | 1.4.3.5.1 | Draft UML |  | 5d | 2007-03-30 | 2007-04-05 |  | 106d | 0d | Manav | 40h |
| 141 | 1.4.3.5.2 | Team review |  | 5d | 2007-04-06 | 2007-04-12 | 140 | 106d | 0d | Manav | 40h |
| 142 | 1.4.3.5.3 | Update design document |  | 5d | 2007-04-13 | 2007-04-19 | 141 | 106d |  | Manav | 40h |
| 143 | 1.4.3.6 | Deliver design doc to BAH (task 3.4.1) | milestone | 0d | 2007-04-19 | 2007-04-19 | 123, 127, 139 | 106d | 0d | Patrick |  |
| 144 | 1.4.3.7 | BAH review design doc (task 3.4.1) |  | 10d | 2007-04-20 | 2007-05-03 | 143 | 106d |  | BAH | 80h |
| 145 | 1.4.4 | **Research** |  | 10d | 2007-03-09 | 2007-03-22 | 96 | 136d |  | Manav | 240h |
| 146 | 1.4.4.1 | **Investigate C3D integration** |  | 10d | 2007-03-09 | 2007-03-22 | 96 | 136d |  | Manav | 160h |
| 147 | 1.4.4.1.1 | Review release 1 code |  | 5d | 2007-03-09 | 2007-03-15 |  | 136d | 0d | Manav | 40h |
| 148 | 1.4.4.1.2 | Review release 1 security model |  | 5d | 2007-03-16 | 2007-03-22 | 147 | 136d |  | Manav | 40h |
| 149 | 1.5 | **Implementation (task 3.5.1)** |  | 25d | 2007-03-09 | 2007-04-12 | 96, 2 | 121d |  | Developers; BAH | 2576h |
| 150 | 1.5.1 | **Database layer** |  | 6d | 2007-03-09 | 2007-03-16 |  | 121d | 9d | Developers | 424h |
| 151 | 1.5.1.1 | **Eligibility model** |  | 4d | 2007-03-09 | 2007-03-14 |  | 130d | 0d | Kruttik; Priyatam | 112h |
| 152 | 1.5.1.1.1 | Create DDLs |  | 1d | 2007-03-09 | 2007-03-09 |  | 130d | 0d | Kruttik; Priyatam | 16h |
| 153 | 1.5.1.1.2 | Apply to database |  | 1d | 2007-03-12 | 2007-03-12 | 152 | 130d | 0d | Kruttik; Priyatam | 16h |
| 154 | 1.5.1.1.3 | Create test data |  | 1d | 2007-03-13 | 2007-03-13 | 153 | 130d | 0d | Kruttik; Priyatam | 16h |
| 155 | 1.5.1.1.4 | Create data access objects (DAOs) |  | 1d | 2007-03-14 | 2007-03-14 | 154 | 130d |  |  |  |

| ID | WBS | Task | Duration | Start | Finish | Predecessors | Total slack | Free slack | Resources | Work |
| --- | --- | --- | --- | --- | --- | --- | --- | --- | --- | --- |
| 156 | 1.5.1.2 | **Study personnel** | 6d | 2007-03-09 | 2007-03-16 |  | 129d | 0d | Priyatam; Kula | 176h |
| 157 | 1.5.1.2.1 | Investigate how to implement Person with Role | 2d | 2007-03-09 | 2007-03-12 |  | 129d | 0d | Priyatam; Kula | 32h |
| 158 | 1.5.1.2.2 | Create DDLs | 1d | 2007-03-13 | 2007-03-13 | 157 | 129d | 0d | Priyatam; Kula | 16h |
| 159 | 1.5.1.2.3 | Apply to database | 1d | 2007-03-14 | 2007-03-14 | 158 | 129d | 0d | Priyatam; Kula | 16h |
| 160 | 1.5.1.2.4 | Create test data | 1d | 2007-03-15 | 2007-03-15 | 159 | 129d | 0d | Priyatam; Kula | 16h |
| 161 | 1.5.1.2.5 | Create data access objects (DAOs) | 1d | 2007-03-16 | 2007-03-16 | 160 | 129d |  |  |  |
| 162 | 1.5.1.3 | **Multi-site** | 4d | 2007-03-09 | 2007-03-14 |  | 121d | 0d | Manav | 56h |
| 163 | 1.5.1.3.1 | Create DDLs | 1d | 2007-03-09 | 2007-03-09 |  | 121d | 0d | Manav | 8h |
| 164 | 1.5.1.3.2 | Apply to database | 1d | 2007-03-12 | 2007-03-12 | 163 | 121d | 0d | Manav | 8h |
| 165 | 1.5.1.3.3 | Create test data | 1d | 2007-03-13 | 2007-03-13 | 164 | 121d | 0d | Manav | 8h |
| 166 | 1.5.1.3.4 | Create data access objects (DAOs) | 1d | 2007-03-14 | 2007-03-14 | 165 | 121d |  |  |  |
| 167 | 1.5.1.4 | Unit testing | 4d | 2007-03-09 | 2007-03-14 |  | 132d |  | Developers | 32h |
| 168 | 1.5.2 | **Deployment** | 2d | 2007-03-15 | 2007-03-16 |  | 130d | 9d | Manav | 32h |
| 169 | 1.5.2.1 | Deploy a second C3PR for multi-site testing | 2d | 2007-03-15 | 2007-03-16 | 162 | 130d |  | Manav | 16h |
| 170 | 1.5.3 | **Business layer** | 12d | 2007-03-15 | 2007-03-30 |  | 121d |  | Developers | 560h |
| 171 | 1.5.3.1 | **Implement eligibility APIs** | 7d | 2007-03-15 | 2007-03-23 | 151 | 130d | 0d | Kruttik; Priyatam | 224h |
| 172 | 1.5.3.1.1 | Design APIs | 2d | 2007-03-15 | 2007-03-16 |  | 130d | 0d | Kruttik; Priyatam | 32h |
| 173 | 1.5.3.1.2 | Implement APIs | 3d | 2007-03-19 | 2007-03-21 | 172 | 130d | 0d | Kruttik; Priyatam | 48h |
| 174 | 1.5.3.1.3 | Deploy APIs | 2d | 2007-03-22 | 2007-03-23 | 173 | 130d |  | Kruttik; Priyatam | 32h |
| 175 | 1.5.3.2 | **Implement study personnel APIs** | 6d | 2007-03-19 | 2007-03-26 | 156 | 129d | 0d | Ramakrishna | 96h |
| 176 | 1.5.3.2.1 | Design APIs | 2d | 2007-03-19 | 2007-03-20 |  | 129d | 0d | Ramakrishna | 16h |
| 177 | 1.5.3.2.2 | Implement APIs | 3d | 2007-03-21 | 2007-03-23 | 176 | 129d | 0d | Ramakrishna | 24h |
| 178 | 1.5.3.2.3 | Deploy APIs | 1d | 2007-03-26 | 2007-03-26 | 177 | 129d |  | Ramakrishna | 8h |
| 179 | 1.5.3.3 | **Implement C3PR registration APIs** | 6d | 2007-03-15 | 2007-03-22 | 162 | 121d | 0d | Manav | 96h |
| 180 | 1.5.3.3.1 | Design APIs | 2d | 2007-03-15 | 2007-03-16 |  | 121d | 0d | Manav | 16h |
| 181 | 1.5.3.3.2 | Implement APIs | 3d | 2007-03-19 | 2007-03-21 | 180 | 121d | 0d | Manav | 24h |
| 182 | 1.5.3.3.3 | Deploy APIs | 1d | 2007-03-22 | 2007-03-22 | 181 | 121d |  | Manav | 8h |
| 183 | 1.5.3.4 | Unit testing | 6d | 2007-03-23 | 2007-03-30 | 179 | 130d |  | Developers | 48h |

| ID | WBS | Task | Type | Duration | Start | Finish | Predecessors | Total slack | Free slack | Resources | Work |
| --- | --- | --- | --- | --- | --- | --- | --- | --- | --- | --- | --- |
| 184 | 1.5.4 | **ESB** |  | 5d | 2007-03-23 | 2007-03-29 | 179 | 121d | 0d | Manav | 120h |
| 185 | 1.5.4.1 | Implement inbound-binding component for C3PR registration |  | 5d | 2007-03-23 | 2007-03-29 |  | 121d |  | Manav | 40h |
| 186 | 1.5.4.2 | Unit testing |  | 5d | 2007-03-23 | 2007-03-29 |  | 121d |  | Developers | 40h |
| 187 | 1.5.5 | **Web interface** |  | 17d | 2007-03-09 | 2007-04-02 |  | 129d |  | Developers | 960h |
| 188 | 1.5.5.1 | **Modify study management interface** |  | 6d | 2007-03-23 | 2007-03-30 |  | 130d |  | Kruttik; Priyatam; Manav | 384h |
| 189 | 1.5.5.1.1 | Manage eligibility criteria |  | 5d | 2007-03-26 | 2007-03-30 | 171 | 130d |  | Kruttik; Priyatam; Manav | 120h |
| 190 | 1.5.5.1.2 | Manage multi-site study |  | 5d | 2007-03-23 | 2007-03-29 | 179 | 131d |  | Kruttik; Priyatam; Manav | 120h |
| 191 | 1.5.5.2 | **Modify study personnel management interface** |  | 5d | 2007-03-27 | 2007-04-02 |  | 129d |  | Priyatam; Kula | 160h |
| 192 | 1.5.5.2.1 | Manage study personnel |  | 5d | 2007-03-27 | 2007-04-02 | 175 | 129d |  | Priyatam; Kula | 80h |
| 193 | 1.5.5.3 | **Modify registration interface** |  | 5d | 2007-03-26 | 2007-03-30 |  | 130d |  | Kruttik; Priyatam | 160h |
| 194 | 1.5.5.3.1 | Check eligibility |  | 5d | 2007-03-26 | 2007-03-30 | 171 | 130d |  | Kruttik; Priyatam | 80h |
| 195 | 1.5.5.4 | **Modify registration management interface** |  | 5d | 2007-03-09 | 2007-03-15 |  | 141d |  | Ramakrishna | 80h |
| 196 | 1.5.5.4.1 | Manage study subject registration |  | 5d | 2007-03-09 | 2007-03-15 |  | 141d |  | Ramakrishna | 40h |
| 197 | 1.5.5.5 | Unit testing |  | 5d | 2007-03-09 | 2007-03-15 |  | 141d |  | Developers | 40h |
| 198 | 1.5.6 | Deliver codebase to BAH (task 3.5.1) | milestone | 0d | 2007-03-29 | 2007-03-29 | 150, 184, 168 | 121d | 0d | Patrick |  |
| 199 | 1.5.7 | BAH review codebase (task 3.5.1) |  | 10d | 2007-03-30 | 2007-04-12 | 198 | 121d |  | BAH | 80h |
| 200 | 1.6 | **Testing** |  | 30d | 2007-03-01 | 2007-04-11 | 2 | 122d |  | Developers; Adopters; BAH | 4952h |
| 201 | 1.6.1 | **Developer testing** |  | 30d | 2007-03-01 | 2007-04-11 |  | 122d |  | BAH; Adopters; Developers | 1968h |
| 202 | 1.6.1.1 | **Update developer test plan (task 3.6.1, task 5.4.1)** |  | 30d | 2007-03-01 | 2007-04-11 |  | 122d |  | Developers; Adopters; BAH | 960h |
| 203 | 1.6.1.1.1 | Developer draft |  | 5d | 2007-03-01 | 2007-03-07 |  | 122d | 0d | Developers | 40h |
| 204 | 1.6.1.1.2 | Adopter review |  | 5d | 2007-03-08 | 2007-03-14 | 203 | 122d | 0d | Adopters | 40h |
| 205 | 1.6.1.1.3 | Developer update |  | 5d | 2007-03-15 | 2007-03-21 | 204 | 122d | 0d | Developers | 40h |
| 206 | 1.6.1.1.4 | Adopter review and sign |  | 5d | 2007-03-22 | 2007-03-28 | 205 | 122d | 0d | Adopters | 40h |
| 207 | 1.6.1.1.5 | Deliver signed test plan to BAH (task 3.6.1, task 5.4.1) | milestone | 0d | 2007-03-28 | 2007-03-28 | 206 | 122d | 0d | Patrick |  |
| 208 | 1.6.1.1.6 | BAH review signed test plan (task 3.6.1, task 5.4.1) |  | 10d | 2007-03-29 | 2007-04-11 | 207 | 122d |  | BAH | 80h |

| ID | WBS | Task | Type | Duration | Start | Finish | Predecessors | Total slack | Free slack | Resources | Work |
| --- | --- | --- | --- | --- | --- | --- | --- | --- | --- | --- | --- |
| 209 | 1.6.1.2 | **Integration and system testing (task 3.8.1)** |  | 10d | 2007-03-23 | 2007-04-05 | 203, 198FS-5d | 126d |  | Developers; BAH | 288h |
| 210 | 1.6.1.2.1 | Generate test data |  | 1d | 2007-03-23 | 2007-03-23 |  | 135d |  | Developers | 8h |
| 211 | 1.6.1.2.2 | Write tests |  | 3d | 2007-03-23 | 2007-03-27 |  | 131d | 0d | Developers | 24h |
| 212 | 1.6.1.2.3 | Validate tests |  | 1d | 2007-03-28 | 2007-03-28 | 211 | 131d | 0d | Developers | 8h |
| 213 | 1.6.1.2.4 | Generate test report |  | 1d | 2007-03-29 | 2007-03-29 | 212 | 131d |  | Developers | 8h |
| 214 | 1.6.1.2.5 | Deliver test report to BAH (task 3.8.1) | milestone | 0d | 2007-03-23 | 2007-03-23 |  | 136d |  | Patrick |  |
| 215 | 1.6.1.2.6 | BAH review test report (task 3.8.1) |  | 10d | 2007-03-23 | 2007-04-05 |  | 126d |  | BAH | 80h |
| 216 | 1.6.2 | **Adopter testing** |  | 30d | 2007-03-01 | 2007-04-11 |  | 122d |  | Adopters; Developers; BAH | 2264h |
| 217 | 1.6.2.1 | **Update adopter test plan (task 5.5.1)** |  | 30d | 2007-03-01 | 2007-04-11 |  | 122d |  | Adopters; Developers; BAH | 1000h |
| 218 | 1.6.2.1.1 | Adopter update test script |  | 5d | 2007-03-01 | 2007-03-07 |  | 122d | 0d | Adopters | 40h |
| 219 | 1.6.2.1.2 | Adopter update test approach |  | 5d | 2007-03-08 | 2007-03-14 | 218 | 122d | 0d | Adopters | 40h |
| 220 | 1.6.2.1.3 | Developer review |  | 5d | 2007-03-15 | 2007-03-21 | 219 | 122d | 0d | Patrick; Ram | 80h |
| 221 | 1.6.2.1.4 | Adopter update |  | 5d | 2007-03-22 | 2007-03-28 | 220 | 122d | 0d | Adopters | 40h |
| 222 | 1.6.2.1.5 | Developer deliver adopter test plan to BAH (task 5.5.1) | milestone | 0d | 2007-03-28 | 2007-03-28 | 221 | 122d | 0d | Patrick |  |
| 223 | 1.6.2.1.6 | BAH review adopter test plan (task 5.5.1) |  | 10d | 2007-03-29 | 2007-04-11 | 222 | 122d |  | BAH | 80h |
| 224 | 1.6.2.2 | **Functional testing (task 5.6.1)** |  | 22d | 2007-03-08 | 2007-04-06 | 218 | 125d |  | Adopters; BAH | 544h |
| 225 | 1.6.2.2.1 | Adopter create test data |  | 5d | 2007-03-08 | 2007-03-14 |  | 125d | 0d | Adopters | 40h |
| 226 | 1.6.2.2.2 | Adopter perform test script |  | 5d | 2007-03-15 | 2007-03-21 | 225 | 125d | 0d | Adopters | 40h |
| 227 | 1.6.2.2.3 | Adopter document results |  | 2d | 2007-03-22 | 2007-03-23 | 226 | 125d | 0d | Adopters | 16h |
| 228 | 1.6.2.2.4 | Adopter log bugs |  | 2d | 2007-03-26 | 2007-03-27 | 227 | 133d |  | Adopters | 16h |
| 229 | 1.6.2.2.5 | Developer deliver adopter test report to BAH (task 5.6.1) | milestone | 0d | 2007-03-23 | 2007-03-23 | 227 | 125d | 0d | Patrick |  |
| 230 | 1.6.2.2.6 | BAH review adopter test report (task 5.6.1) |  | 10d | 2007-03-26 | 2007-04-06 | 229 | 125d |  | BAH | 80h |
| 231 | 1.7 | **Documentation** |  | 15d | 2007-03-23 | 2007-04-12 | 2 | 121d |  | Developers; Adopters; BAH | 1656h |
| 232 | 1.7.1 | **Installation guide (task 3.10.1)** |  | 13d | 2007-03-27 | 2007-04-12 | 198FS-3d | 121d |  | Developers; BAH | 312h |
| 233 | 1.7.1.1 | Update installation guide |  | 3d | 2007-03-27 | 2007-03-29 |  | 121d | 0d | Developers | 24h |
| 234 | 1.7.1.2 | Deliver installation guide to BAH (task 3.10.1) | milestone | 0d | 2007-03-29 | 2007-03-29 | 233 | 121d | 0d | Patrick |  |
| 235 | 1.7.1.3 | BAH review of installation guide (task 3.10.1) |  | 10d | 2007-03-30 | 2007-04-12 | 234 | 121d |  | BAH | 80h |

| ID | WBS | Task | Type | Duration | Start | Finish | Predecessors | Total slack | Free slack | Constraint | Resources | Work |
| --- | --- | --- | --- | --- | --- | --- | --- | --- | --- | --- | --- | --- |
| 236 | 1.7.2 | **Administration guide (task 3.13.1)** |  | 13d | 2007-03-27 | 2007-04-12 | 198FS-3d | 121d |  |  | Developers; BAH | 312h |
| 237 | 1.7.2.1 | Update administration guide |  | 3d | 2007-03-27 | 2007-03-29 |  | 121d | 0d |  | Developers | 24h |
| 238 | 1.7.2.2 | Deliver administration guide to BAH (task 3.13.1) | milestone | 0d | 2007-03-29 | 2007-03-29 | 237 | 121d | 0d |  | Patrick |  |
| 239 | 1.7.2.3 | BAH review of administration guide (task 3.13.1) |  | 10d | 2007-03-30 | 2007-04-12 | 238 | 121d |  |  | BAH | 80h |
| 240 | 1.7.3 | **Release notes (task 3.14.1)** |  | 13d | 2007-03-27 | 2007-04-12 | 198FS-3d | 121d |  |  | Developers; BAH | 312h |
| 241 | 1.7.3.1 | Update release notes |  | 3d | 2007-03-27 | 2007-03-29 |  | 121d | 0d |  | Developers | 24h |
| 242 | 1.7.3.2 | Deliver release notes to BAH (task 3.14.1) | milestone | 0d | 2007-03-29 | 2007-03-29 | 241 | 121d | 0d |  | Patrick |  |
| 243 | 1.7.3.3 | BAH review of release notes (task 3.14.1) |  | 10d | 2007-03-30 | 2007-04-12 | 242 | 121d |  |  | BAH | 80h |
| 244 | 1.7.4 | **Adopter summary of C3PR (task 5.1.1)** |  | 15d | 2007-03-23 | 2007-04-12 | 198FS-5d | 121d |  |  | Adopters; BAH | 360h |
| 245 | 1.7.4.1 | Adopter update summary |  | 3d | 2007-03-23 | 2007-03-27 |  | 121d | 0d |  | Adopters | 24h |
| 246 | 1.7.4.2 | Developer review summary |  | 1d | 2007-03-28 | 2007-03-28 | 245 | 121d | 0d |  | Developers | 8h |
| 247 | 1.7.4.3 | Adopter update summary |  | 1d | 2007-03-29 | 2007-03-29 | 246 | 121d | 0d |  | Adopters | 8h |
| 248 | 1.7.4.4 | Developer deliver C3PR summary to BAH (task 5.1.1) | milestone | 0d | 2007-03-29 | 2007-03-29 | 247 | 121d | 0d |  | Patrick |  |
| 249 | 1.7.4.5 | BAH review of C3PR summary (task 5.1.1) |  | 10d | 2007-03-30 | 2007-04-12 | 248 | 121d |  |  | BAH | 80h |
| 250 | 2 | **Iteration 2 (eligibility, study personnel/security, C3D integration, multi-site study)** |  | 35d | 2007-04-02 | 2007-05-18 |  | 95d |  |  |  | 20400h |
| 251 | 2.1 | Iteration start | milestone | 0d | 2007-04-02 | 2007-04-02 |  | 95d | 0d | start no earlier than 2007-04-02 |  |  |
| 252 | 2.2 | **Project Management** |  | 30d | 2007-04-02 | 2007-05-11 | 251 | 100d |  |  | Patrick; Adopters; BAH | 2640h |
| 253 | 2.2.1 | **Draft project plan (task 1.1)** |  | 30d | 2007-04-02 | 2007-05-11 |  | 100d |  |  | Patrick; Adopters; BAH | 960h |
| 254 | 2.2.1.1 | Developer draft |  | 5d | 2007-04-02 | 2007-04-06 |  | 100d | 0d |  | Patrick | 40h |
| 255 | 2.2.1.2 | BAH review |  | 5d | 2007-04-09 | 2007-04-13 | 254 | 100d | 0d |  | BAH | 40h |
| 256 | 2.2.1.3 | Developer update |  | 5d | 2007-04-16 | 2007-04-20 | 255 | 100d | 0d |  | Patrick | 40h |
| 257 | 2.2.1.4 | Adopter review |  | 3d | 2007-04-23 | 2007-04-25 | 256 | 100d | 0d |  | Adopters | 24h |
| 258 | 2.2.1.5 | Developer update |  | 2d | 2007-04-26 | 2007-04-27 | 257 | 100d | 0d |  | Patrick | 16h |
| 259 | 2.2.1.6 | Deliver project plan to BAH (task 1.1) | milestone | 0d | 2007-04-27 | 2007-04-27 | 258 | 100d | 0d |  | Patrick |  |
| 260 | 2.2.1.7 | BAH review project plan (task 1.1) |  | 10d | 2007-04-30 | 2007-05-11 | 259 | 100d |  |  | BAH | 80h |

| ID | WBS | Task | Type | Duration | Start | Finish | Predecessors | Total slack | Free slack | Resources | Work |
| --- | --- | --- | --- | --- | --- | --- | --- | --- | --- | --- | --- |
| 261 | 2.2.2 | **Update risk matrix (task 1.3.1)** |  | 20d | 2007-04-02 | 2007-04-27 |  | 100d |  | Patrick; BAH | 480h |
| 262 | 2.2.2.1 | Update risk matrix for week 1 |  | 5d | 2007-04-02 | 2007-04-06 |  | 100d | 0d | Patrick | 40h |
| 263 | 2.2.2.2 | Update risk matrix for week 2 |  | 5d | 2007-04-09 | 2007-04-13 | 262 | 100d | 0d | Patrick | 40h |
| 264 | 2.2.2.3 | Deliver risk matrix to BAH (task 1.3.1) | milestone | 0d | 2007-04-13 | 2007-04-13 | 263 | 100d | 0d | Patrick |  |
| 265 | 2.2.2.4 | BAH review risk matrix (task 1.3.1) |  | 10d | 2007-04-16 | 2007-04-27 | 264 | 110d |  | BAH | 80h |
| 266 | 2.2.3 | **Monthly report (task 1.3.1)** |  | 20d | 2007-04-16 | 2007-05-11 | 264 | 100d |  | Patrick; BAH | 480h |
| 267 | 2.2.3.1 | Update risk matrix for week 3 |  | 5d | 2007-04-16 | 2007-04-20 |  | 100d | 0d | Patrick | 40h |
| 268 | 2.2.3.2 | Update risk matrix for week 4 |  | 5d | 2007-04-23 | 2007-04-27 | 267 | 100d | 0d | Patrick | 40h |
| 269 | 2.2.3.3 | Deliver monthly report and risk matrix to BAH (task 1.3.1) | milestone | 0d | 2007-04-27 | 2007-04-27 | 268 | 100d | 0d | Patrick |  |
| 270 | 2.2.3.4 | BAH review monthly report and risk matrix (task 1.3.1) |  | 10d | 2007-04-30 | 2007-05-11 | 269 | 100d |  | BAH | 80h |
| 271 | 2.3 | **Requirements and use cases** |  | 32d | 2007-04-02 | 2007-05-15 | 251 | 95d |  | Developers; Adopters; BAH | 4048h |
| 272 | 2.3.1 | **Create level 1 use cases and requirements** |  | 4d | 2007-04-02 | 2007-04-05 |  | 95d | 0d | Developers | 288h |
| 273 | 2.3.1.1 | **Level 1 use cases for eligibility** |  | 2d | 2007-04-02 | 2007-04-03 |  | 97d |  | Kruttik; Priyatam | 64h |
| 274 | 2.3.1.1.1 | Use case document (task 3.1.1) |  | 1d | 2007-04-02 | 2007-04-02 |  | 97d | 0d | Kruttik; Priyatam | 16h |
| 275 | 2.3.1.1.2 | Requirements document (3.2.1) |  | 1d | 2007-04-03 | 2007-04-03 | 274 | 97d |  | Kruttik; Priyatam | 16h |
| 276 | 2.3.1.2 | **Level 1 use cases for study personnel** |  | 2d | 2007-04-02 | 2007-04-03 |  | 97d |  | Priyatam; Kula | 64h |
| 277 | 2.3.1.2.1 | Use case document (task 3.1.1) |  | 1d | 2007-04-02 | 2007-04-02 |  | 97d | 0d | Priyatam; Kula | 16h |
| 278 | 2.3.1.2.2 | Requirements document (3.2.1) |  | 1d | 2007-04-03 | 2007-04-03 | 277 | 97d |  | Priyatam; Kula | 16h |
| 279 | 2.3.1.3 | **Level 1 use cases for registration management** |  | 2d | 2007-04-02 | 2007-04-03 |  | 97d |  | Ramakrishna | 32h |
| 280 | 2.3.1.3.1 | Use case document (task 3.1.1) |  | 1d | 2007-04-02 | 2007-04-02 |  | 97d | 0d | Ramakrishna | 8h |
| 281 | 2.3.1.3.2 | Requirements document (3.2.1) |  | 1d | 2007-04-03 | 2007-04-03 | 280 | 97d |  | Ramakrishna | 8h |
| 282 | 2.3.1.4 | **Level 1 use cases for multi-site study** |  | 4d | 2007-04-02 | 2007-04-05 |  | 95d |  | Manav | 64h |
| 283 | 2.3.1.4.1 | Use case document (task 3.1.1) |  | 2d | 2007-04-02 | 2007-04-03 |  | 95d | 0d | Manav | 16h |
| 284 | 2.3.1.4.2 | Requirements document (3.2.1) |  | 2d | 2007-04-04 | 2007-04-05 | 283 | 95d |  | Manav | 16h |

| ID | WBS | Task | Duration | Start | Finish | Predecessors | Total slack | Free slack | Resources | Work |
| --- | --- | --- | --- | --- | --- | --- | --- | --- | --- | --- |
| 285 | 2.3.1.5 | **Level 1 use cases for C3D integration** | 2d | 2007-04-02 | 2007-04-03 |  | 97d |  | Manav | 32h |
| 286 | 2.3.1.5.1 | Use case document (task 3.1.1) | 1d | 2007-04-02 | 2007-04-02 |  | 97d | 0d | Manav | 8h |
| 287 | 2.3.1.5.2 | Requirements document (3.2.1) | 1d | 2007-04-03 | 2007-04-03 | 286 | 97d |  | Manav | 8h |
| 288 | 2.3.2 | **Update use case document (task 3.1.1, task 5.2.1)** | 9d | 2007-04-06 | 2007-04-18 | 272 | 98d | 0d | Developers; Adopters | 1416h |
| 289 | 2.3.2.1 | **Update eligibility use cases** | 9d | 2007-04-06 | 2007-04-18 |  | 98d |  | Kruttik; Adopters; Priyatam | 312h |
| 290 | 2.3.2.1.1 | Developer update | 2d | 2007-04-06 | 2007-04-09 |  | 98d | 0d | Kruttik; Priyatam | 32h |
| 291 | 2.3.2.1.2 | Adopter review | 5d | 2007-04-10 | 2007-04-16 | 290 | 98d | 0d | Adopters | 40h |
| 292 | 2.3.2.1.3 | Developer update | 1d | 2007-04-17 | 2007-04-17 | 291 | 98d | 0d | Kruttik; Priyatam | 16h |
| 293 | 2.3.2.1.4 | Adopter sign-off | 1d | 2007-04-18 | 2007-04-18 | 292 | 98d |  | Adopters | 8h |
| 294 | 2.3.2.2 | **Update study personnel use cases** | 9d | 2007-04-06 | 2007-04-18 |  | 98d |  | Priyatam; Adopters; Kula | 312h |
| 295 | 2.3.2.2.1 | Developer update | 2d | 2007-04-06 | 2007-04-09 |  | 98d | 0d | Priyatam; Kula | 32h |
| 296 | 2.3.2.2.2 | Adopter review | 5d | 2007-04-10 | 2007-04-16 | 295 | 98d | 0d | Adopters | 40h |
| 297 | 2.3.2.2.3 | Developer update | 1d | 2007-04-17 | 2007-04-17 | 296 | 98d | 0d | Priyatam; Kula | 16h |
| 298 | 2.3.2.2.4 | Adopter sign-off | 1d | 2007-04-18 | 2007-04-18 | 297 | 98d |  | Adopters | 8h |
| 299 | 2.3.2.3 | **Update registration management use cases** | 9d | 2007-04-06 | 2007-04-18 |  | 98d |  | Ramakrishna; Adopters | 216h |
| 300 | 2.3.2.3.1 | Developer update | 2d | 2007-04-06 | 2007-04-09 |  | 98d | 0d | Ramakrishna | 16h |
| 301 | 2.3.2.3.2 | Adopter review | 5d | 2007-04-10 | 2007-04-16 | 300 | 98d | 0d | Adopters | 40h |
| 302 | 2.3.2.3.3 | Developer update | 1d | 2007-04-17 | 2007-04-17 | 301 | 98d | 0d | Ramakrishna | 8h |
| 303 | 2.3.2.3.4 | Adopter sign-off | 1d | 2007-04-18 | 2007-04-18 | 302 | 98d |  | Adopters | 8h |
| 304 | 2.3.2.4 | **Update multi-site trial use cases** | 9d | 2007-04-06 | 2007-04-18 |  | 98d |  | Manav; Adopters | 216h |
| 305 | 2.3.2.4.1 | Developer update | 2d | 2007-04-06 | 2007-04-09 |  | 98d | 0d | Manav | 16h |
| 306 | 2.3.2.4.2 | Adopter review | 5d | 2007-04-10 | 2007-04-16 | 305 | 98d | 0d | Adopters | 40h |
| 307 | 2.3.2.4.3 | Developer update | 1d | 2007-04-17 | 2007-04-17 | 306 | 98d | 0d | Manav | 8h |
| 308 | 2.3.2.4.4 | Adopter sign-off | 1d | 2007-04-18 | 2007-04-18 | 307 | 98d |  | Adopters | 8h |

| ID | WBS | Task | Duration | Start | Finish | Predecessors | Total slack | Free slack | Resources | Work |
| --- | --- | --- | --- | --- | --- | --- | --- | --- | --- | --- |
| 309 | 2.3.2.5 | **Update C3D integration use cases** | 9d | 2007-04-06 | 2007-04-18 |  | 98d |  | Manav; Adopters | 216h |
| 310 | 2.3.2.5.1 | Developer update | 2d | 2007-04-06 | 2007-04-09 |  | 98d | 0d | Manav | 16h |
| 311 | 2.3.2.5.2 | Adopter review | 5d | 2007-04-10 | 2007-04-16 | 310 | 98d | 0d | Adopters | 40h |
| 312 | 2.3.2.5.3 | Developer update | 1d | 2007-04-17 | 2007-04-17 | 311 | 98d | 0d | Manav | 8h |
| 313 | 2.3.2.5.4 | Adopter sign-off | 1d | 2007-04-18 | 2007-04-18 | 312 | 98d |  | Adopters | 8h |
| 314 | 2.3.3 | **Update requirements document (task 3.2.1, task 5.3.1)** | 9d | 2007-04-19 | 2007-05-01 | 288 | 98d | 0d | Developers; Adopters | 1416h |
| 315 | 2.3.3.1 | **Update eligibility requirements** | 9d | 2007-04-19 | 2007-05-01 |  | 98d |  | Kruttik; Priyatam; Adopters | 312h |
| 316 | 2.3.3.1.1 | Developer update | 2d | 2007-04-19 | 2007-04-20 |  | 98d | 0d | Kruttik; Priyatam | 32h |
| 317 | 2.3.3.1.2 | Adopter review | 5d | 2007-04-23 | 2007-04-27 | 316 | 98d | 0d | Adopters | 40h |
| 318 | 2.3.3.1.3 | Developer update | 1d | 2007-04-30 | 2007-04-30 | 317 | 98d | 0d | Kruttik; Priyatam | 16h |
| 319 | 2.3.3.1.4 | Adopter sign-off | 1d | 2007-05-01 | 2007-05-01 | 318 | 98d |  | Adopters | 8h |
| 320 | 2.3.3.2 | **Update study personel requirements** | 9d | 2007-04-19 | 2007-05-01 |  | 98d |  | Priyatam; Adopters; Kula | 312h |
| 321 | 2.3.3.2.1 | Developer update | 2d | 2007-04-19 | 2007-04-20 |  | 98d | 0d | Priyatam; Kula | 32h |
| 322 | 2.3.3.2.2 | Adopter review | 5d | 2007-04-23 | 2007-04-27 | 321 | 98d | 0d | Adopters | 40h |
| 323 | 2.3.3.2.3 | Developer update | 1d | 2007-04-30 | 2007-04-30 | 322 | 98d | 0d | Priyatam; Kula | 16h |
| 324 | 2.3.3.2.4 | Adopter sign-off | 1d | 2007-05-01 | 2007-05-01 | 323 | 98d |  | Adopters | 8h |
| 325 | 2.3.3.3 | **Update registration management requirements** | 9d | 2007-04-19 | 2007-05-01 |  | 98d |  | Ramakrishna; Adopters | 216h |
| 326 | 2.3.3.3.1 | Developer update | 2d | 2007-04-19 | 2007-04-20 |  | 98d | 0d | Ramakrishna | 16h |
| 327 | 2.3.3.3.2 | Adopter review | 5d | 2007-04-23 | 2007-04-27 | 326 | 98d | 0d | Adopters | 40h |
| 328 | 2.3.3.3.3 | Developer update | 1d | 2007-04-30 | 2007-04-30 | 327 | 98d | 0d | Ramakrishna | 8h |
| 329 | 2.3.3.3.4 | Adopter sign-off | 1d | 2007-05-01 | 2007-05-01 | 328 | 98d |  | Adopters | 8h |
| 330 | 2.3.3.4 | **Update multi-site trial requirements** | 9d | 2007-04-19 | 2007-05-01 |  | 98d |  | Manav; Adopters | 216h |
| 331 | 2.3.3.4.1 | Developer update | 2d | 2007-04-19 | 2007-04-20 |  | 98d | 0d | Manav | 16h |
| 332 | 2.3.3.4.2 | Adopter review | 5d | 2007-04-23 | 2007-04-27 | 331 | 98d | 0d | Adopters | 40h |
| 333 | 2.3.3.4.3 | Developer update | 1d | 2007-04-30 | 2007-04-30 | 332 | 98d | 0d | Manav | 8h |
| 334 | 2.3.3.4.4 | Adopter sign-off | 1d | 2007-05-01 | 2007-05-01 | 333 | 98d |  | Adopters | 8h |

| ID | WBS | Task | Type | Duration | Start | Finish | Predecessors | Total slack | Free slack | Resources | Work |
| --- | --- | --- | --- | --- | --- | --- | --- | --- | --- | --- | --- |
| 335 | 2.3.3.5 | **Update C3D integration requirements** |  | 9d | 2007-04-19 | 2007-05-01 |  | 98d |  | Manav; Adopters | 216h |
| 336 | 2.3.3.5.1 | Developer update |  | 2d | 2007-04-19 | 2007-04-20 |  | 98d | 0d | Manav | 16h |
| 337 | 2.3.3.5.2 | Adopter review |  | 5d | 2007-04-23 | 2007-04-27 | 336 | 98d | 0d | Adopters | 40h |
| 338 | 2.3.3.5.3 | Developer update |  | 1d | 2007-04-30 | 2007-04-30 | 337 | 98d | 0d | Manav | 8h |
| 339 | 2.3.3.5.4 | Adopter sign-off |  | 1d | 2007-05-01 | 2007-05-01 | 338 | 98d |  | Adopters | 8h |
| 340 | 2.3.4 | Developer deliver use case document to BAH (task 3.1.1, task 5.2.1) | milestone | 0d | 2007-05-01 | 2007-05-01 | 314 | 98d | 0d | Patrick |  |
| 341 | 2.3.5 | BAH review use case document (task 3.1.1, task 5.2.1) |  | 10d | 2007-05-02 | 2007-05-15 | 340 | 98d |  | BAH | 80h |
| 342 | 2.3.6 | Developer deliver requirements document to BAH (task 3.2.1, task 5.3.1) | milestone | 0d | 2007-05-01 | 2007-05-01 | 314 | 98d | 0d | Patrick |  |
| 343 | 2.3.7 | BAH review requirements document (task 3.2.1, task 5.3.1) |  | 10d | 2007-05-02 | 2007-05-15 | 342 | 98d |  | BAH | 80h |
| 344 | 2.4 | **Analysis and Design** |  | 31d | 2007-04-06 | 2007-05-18 | 272, 251 | 95d |  | Developers; Adopters; BAH | 4048h |
| 345 | 2.4.1 | **Perform level 1 design** |  | 4d | 2007-04-06 | 2007-04-11 |  | 95d | 0d | Developers | 64h |
| 346 | 2.4.1.1 | Cursory BRIDG harmonization |  | 1d | 2007-04-06 | 2007-04-06 |  | 95d | 0d | Developers | 8h |
| 347 | 2.4.1.2 | Update implementation model |  | 1d | 2007-04-09 | 2007-04-09 | 346 | 95d | 0d | Developers | 8h |
| 348 | 2.4.1.3 | Cursory system design |  | 2d | 2007-04-10 | 2007-04-11 | 347 | 95d |  | Developers | 16h |
| 349 | 2.4.2 | **Modeling (task 3.3.1)** |  | 27d | 2007-04-12 | 2007-05-18 | 345 | 95d |  | Developers; Adopters | 1080h |
| 350 | 2.4.2.1 | **Update model** |  | 6d | 2007-04-12 | 2007-04-19 |  | 95d | 0d | Developers | 240h |
| 351 | 2.4.2.1.1 | **BRIDG harmonization** |  | 3d | 2007-04-12 | 2007-04-16 | 345 | 95d | 0d |  | 96h |
| 352 | 2.4.2.1.1.1 | Harmonize Study model |  | 2d | 2007-04-12 | 2007-04-13 |  | 96d |  | Kruttik; Priyatam; Manav | 48h |
| 353 | 2.4.2.1.1.2 | Harmonize Personnel model |  | 3d | 2007-04-12 | 2007-04-16 |  | 95d |  | Ramakrishna | 24h |
| 354 | 2.4.2.1.1.3 | Harmonize Multi-site Study model |  | 3d | 2007-04-12 | 2007-04-16 |  | 95d |  | Manav | 24h |
| 355 | 2.4.2.1.2 | **Model implementation** |  | 3d | 2007-04-17 | 2007-04-19 | 351 | 95d |  |  | 96h |
| 356 | 2.4.2.1.2.1 | Implement Study model |  | 2d | 2007-04-17 | 2007-04-18 |  | 96d |  | Kruttik; Priyatam; Manav | 48h |
| 357 | 2.4.2.1.2.2 | Implement Personnel model |  | 3d | 2007-04-17 | 2007-04-19 |  | 95d |  | Ramakrishna | 24h |
| 358 | 2.4.2.1.2.3 | Implement Multi-site Study model |  | 3d | 2007-04-17 | 2007-04-19 |  | 95d |  | Manav | 24h |
| 359 | 2.4.2.2 | Adopter review |  | 5d | 2007-04-20 | 2007-04-26 | 350 | 95d | 0d | Adopters | 40h |

| ID | WBS | Task | Type | Duration | Start | Finish | Predecessors | Total slack | Free slack | Resources | Work |
| --- | --- | --- | --- | --- | --- | --- | --- | --- | --- | --- | --- |
| 360 | 2.4.2.3 | **Update model** |  | 6d | 2007-04-27 | 2007-05-04 | 359 | 95d | 0d | Developers | 288h |
| 361 | 2.4.2.3.1 | **BRIDG harmonization** |  | 3d | 2007-04-27 | 2007-05-01 | 359 | 95d | 0d |  | 120h |
| 362 | 2.4.2.3.1.1 | Harmonize Study model |  | 3d | 2007-04-27 | 2007-05-01 |  | 95d |  | Kruttik; Priyatam; Manav | 72h |
| 363 | 2.4.2.3.1.2 | Harmonize Personnel model |  | 3d | 2007-04-27 | 2007-05-01 |  | 95d |  | Ramakrishna | 24h |
| 364 | 2.4.2.3.1.3 | Harmonize Multi-site Study model |  | 3d | 2007-04-27 | 2007-05-01 |  | 95d | 0d | Manav | 24h |
| 365 | 2.4.2.3.2 | **Model implementation** |  | 3d | 2007-05-02 | 2007-05-04 | 361, 364 | 95d |  |  | 120h |
| 366 | 2.4.2.3.2.1 | Implement Study model |  | 3d | 2007-05-02 | 2007-05-04 |  | 95d |  | Kruttik; Priyatam; Manav | 72h |
| 367 | 2.4.2.3.2.2 | Implement Personnel model |  | 3d | 2007-05-02 | 2007-05-04 |  | 95d |  | Ramakrishna | 24h |
| 368 | 2.4.2.3.2.3 | Implement Multi-site Study model |  | 3d | 2007-05-02 | 2007-05-04 |  | 95d | 0d | Manav | 24h |
| 369 | 2.4.2.4 | Developer deliver UML to BAH (task 3.3.1) | milestone | 0d | 2007-05-04 | 2007-05-04 | 360, 368 | 95d | 0d | Patrick |  |
| 370 | 2.4.2.5 | BAH review of UML (task 3.3.1) |  | 10d | 2007-05-07 | 2007-05-18 | 369 | 95d |  | BAH | 80h |
| 371 | 2.4.3 | **System design (task 3.4.1)** |  | 25d | 2007-04-12 | 2007-05-16 | 345 | 97d |  | Developers; BAH | 2160h |
| 372 | 2.4.3.1 | **Design eligibility** |  | 15d | 2007-04-12 | 2007-05-02 |  | 97d | 0d | Kruttik; Priyatam | 480h |
| 373 | 2.4.3.1.1 | Draft UML |  | 5d | 2007-04-12 | 2007-04-18 |  | 97d | 0d | Kruttik; Priyatam | 80h |
| 374 | 2.4.3.1.2 | Team review |  | 5d | 2007-04-19 | 2007-04-25 | 373 | 97d | 0d | Kruttik; Priyatam | 80h |
| 375 | 2.4.3.1.3 | Update design document |  | 5d | 2007-04-26 | 2007-05-02 | 374 | 97d |  | Kruttik; Priyatam | 80h |
| 376 | 2.4.3.2 | **Design personnel** |  | 15d | 2007-04-12 | 2007-05-02 |  | 97d | 0d | Priyatam; Kula | 480h |
| 377 | 2.4.3.2.1 | Draft UML |  | 5d | 2007-04-12 | 2007-04-18 |  | 97d | 0d | Priyatam; Kula | 80h |
| 378 | 2.4.3.2.2 | Team review |  | 5d | 2007-04-19 | 2007-04-25 | 377 | 97d | 0d | Priyatam; Kula | 80h |
| 379 | 2.4.3.2.3 | Update design document |  | 5d | 2007-04-26 | 2007-05-02 | 378 | 97d |  | Priyatam; Kula | 80h |
| 380 | 2.4.3.3 | **Design registration management** |  | 15d | 2007-04-12 | 2007-05-02 |  | 97d | 0d | Ramakrishna | 240h |
| 381 | 2.4.3.3.1 | Draft UML |  | 5d | 2007-04-12 | 2007-04-18 |  | 97d | 0d | Ramakrishna | 40h |
| 382 | 2.4.3.3.2 | Team review |  | 5d | 2007-04-19 | 2007-04-25 | 381 | 97d | 0d | Ramakrishna | 40h |
| 383 | 2.4.3.3.3 | Update design document |  | 5d | 2007-04-26 | 2007-05-02 | 382 | 97d |  | Ramakrishna | 40h |

| ID | WBS | Task | Type | Duration | Start | Finish | Predecessors | Total slack | Free slack | Resources | Work |
| --- | --- | --- | --- | --- | --- | --- | --- | --- | --- | --- | --- |
| 384 | 2.4.3.4 | **Design multi-site study** |  | 15d | 2007-04-12 | 2007-05-02 |  | 97d | 0d | Manav | 240h |
| 385 | 2.4.3.4.1 | Draft UML |  | 5d | 2007-04-12 | 2007-04-18 |  | 82d | 0d | Manav | 40h |
| 386 | 2.4.3.4.2 | Team review |  | 5d | 2007-04-19 | 2007-04-25 | 385 | 82d | 0d | Manav | 40h |
| 387 | 2.4.3.4.3 | Update design document |  | 5d | 2007-04-26 | 2007-05-02 | 386 | 82d |  | Manav | 40h |
| 388 | 2.4.3.5 | **Design C3D integration** |  | 15d | 2007-04-12 | 2007-05-02 |  | 97d | 0d | Manav | 240h |
| 389 | 2.4.3.5.1 | Draft UML |  | 5d | 2007-04-12 | 2007-04-18 |  | 97d | 0d | Manav | 40h |
| 390 | 2.4.3.5.2 | Team review |  | 5d | 2007-04-19 | 2007-04-25 | 389 | 97d | 0d | Manav | 40h |
| 391 | 2.4.3.5.3 | Update design document |  | 5d | 2007-04-26 | 2007-05-02 | 390 | 97d |  | Manav | 40h |
| 392 | 2.4.3.6 | Deliver design doc to BAH (task 3.4.1) | milestone | 0d | 2007-05-02 | 2007-05-02 | 372, 376, 380, 384, 388 | 97d | 0d | Patrick |  |
| 393 | 2.4.3.7 | BAH review design doc (task 3.4.1) |  | 10d | 2007-05-03 | 2007-05-16 | 392 | 97d |  | BAH | 80h |
| 394 | 2.5 | **Implementation (task 3.5.1)** |  | 25d | 2007-04-12 | 2007-05-16 | 345, 251 | 96d |  | Developers; BAH | 2736h |
| 395 | 2.5.1 | **Database** |  | 3d | 2007-04-12 | 2007-04-16 |  | 96d | 0d | Developers | 216h |
| 396 | 2.5.1.1 | **Eligibility model** |  | 3d | 2007-04-12 | 2007-04-16 |  | 96d | 0d | Kruttik; Priyatam | 96h |
| 397 | 2.5.1.1.1 | Update DDLs |  | 1d | 2007-04-12 | 2007-04-12 |  | 96d | 0d | Kruttik; Priyatam | 16h |
| 398 | 2.5.1.1.2 | Apply to database |  | 1d | 2007-04-13 | 2007-04-13 | 397 | 96d | 0d | Kruttik; Priyatam | 16h |
| 399 | 2.5.1.1.3 | Create test data |  | 1d | 2007-04-16 | 2007-04-16 | 398 | 96d |  | Kruttik; Priyatam | 16h |
| 400 | 2.5.1.2 | **Study personnel** |  | 3d | 2007-04-12 | 2007-04-16 |  | 97d | 0d | Ramakrishna | 48h |
| 401 | 2.5.1.2.1 | Update DDLs |  | 1d | 2007-04-12 | 2007-04-12 |  | 97d | 0d | Ramakrishna | 8h |
| 402 | 2.5.1.2.2 | Apply to database |  | 1d | 2007-04-13 | 2007-04-13 | 401 | 97d | 0d | Ramakrishna | 8h |
| 403 | 2.5.1.2.3 | Create test data |  | 1d | 2007-04-16 | 2007-04-16 | 402 | 97d |  | Ramakrishna | 8h |
| 404 | 2.5.1.3 | **Multi-site** |  | 3d | 2007-04-12 | 2007-04-16 |  | 97d | 0d | Manav | 48h |
| 405 | 2.5.1.3.1 | Update DDLs |  | 1d | 2007-04-12 | 2007-04-12 |  | 97d | 0d | Manav | 8h |
| 406 | 2.5.1.3.2 | Apply to database |  | 1d | 2007-04-13 | 2007-04-13 | 405 | 97d | 0d | Manav | 8h |
| 407 | 2.5.1.3.3 | Create test data |  | 1d | 2007-04-16 | 2007-04-16 | 406 | 97d |  | Manav | 8h |

| ID | WBS | Task | Duration | Start | Finish | Predecessors | Total slack | Free slack | Resources | Work |
| --- | --- | --- | --- | --- | --- | --- | --- | --- | --- | --- |
| 408 | 2.5.2 | **Business layer** | 10d | 2007-04-17 | 2007-04-30 |  | 96d |  | Developers | 816h |
| 409 | 2.5.2.1 | **Implement eligibility APIs** | 7d | 2007-04-17 | 2007-04-25 | 396 | 96d | 0d | Kruttik; Priyatam | 224h |
| 410 | 2.5.2.1.1 | Update APIs | 2d | 2007-04-17 | 2007-04-18 |  | 96d | 0d | Kruttik; Priyatam | 32h |
| 411 | 2.5.2.1.2 | Implement APIs | 3d | 2007-04-19 | 2007-04-23 | 410 | 96d | 0d | Kruttik; Priyatam | 48h |
| 412 | 2.5.2.1.3 | Deploy APIs | 2d | 2007-04-24 | 2007-04-25 | 411 | 96d |  | Kruttik; Priyatam | 32h |
| 413 | 2.5.2.2 | **Implement study personnel APIs** | 6d | 2007-04-17 | 2007-04-24 | 400 | 97d | 0d | Ramakrishna | 96h |
| 414 | 2.5.2.2.1 | Update APIs | 2d | 2007-04-17 | 2007-04-18 |  | 97d | 0d | Ramakrishna | 16h |
| 415 | 2.5.2.2.2 | Implement APIs | 3d | 2007-04-19 | 2007-04-23 | 414 | 97d | 0d | Ramakrishna | 24h |
| 416 | 2.5.2.2.3 | Deploy APIs | 1d | 2007-04-24 | 2007-04-24 | 415 | 97d |  | Ramakrishna | 8h |
| 417 | 2.5.2.3 | **Implement C3PR registration APIs** | 6d | 2007-04-17 | 2007-04-24 | 404 | 97d | 0d | Manav | 96h |
| 418 | 2.5.2.3.1 | Update APIs | 2d | 2007-04-17 | 2007-04-18 |  | 97d | 0d | Manav | 16h |
| 419 | 2.5.2.3.2 | Implement APIs | 3d | 2007-04-19 | 2007-04-23 | 418 | 97d | 0d | Manav | 24h |
| 420 | 2.5.2.3.3 | Deploy APIs | 1d | 2007-04-24 | 2007-04-24 | 419 | 97d |  | Manav | 8h |
| 421 | 2.5.2.4 | **Implement import eligibility** | 10d | 2007-04-17 | 2007-04-30 | 396 | 109d |  | Kruttik; Priyatam | 320h |
| 422 | 2.5.2.4.1 | Import eligibility from a file | 5d | 2007-04-17 | 2007-04-23 |  | 109d | 0d | Kruttik; Priyatam | 80h |
| 423 | 2.5.2.4.2 | Import eligibility from the caDSR | 5d | 2007-04-24 | 2007-04-30 | 422 | 109d |  | Kruttik; Priyatam | 80h |
| 424 | 2.5.3 | **ESB** | 5d | 2007-04-17 | 2007-04-23 | 395 | 114d |  | Manav | 80h |
| 425 | 2.5.3.1 | Implement binding components for C3D | 5d | 2007-04-17 | 2007-04-23 |  | 114d |  | Manav | 40h |
| 426 | 2.5.4 | **Security** | 5d | 2007-04-12 | 2007-04-18 |  | 117d |  | Ramakrishna; Manav | 240h |
| 427 | 2.5.4.1 | Connect C3PR roles to GridGrouper groups | 5d | 2007-04-12 | 2007-04-18 |  | 117d |  | Ramakrishna; Manav | 80h |
| 428 | 2.5.4.2 | Hook groups into authorization | 5d | 2007-04-12 | 2007-04-18 |  | 117d |  | Ramakrishna; Manav | 80h |
| 429 | 2.5.5 | **Web interface** | 15d | 2007-04-12 | 2007-05-02 |  | 96d | 0d | Developers | 904h |
| 430 | 2.5.5.1 | **Modify study management interface** | 6d | 2007-04-25 | 2007-05-02 |  | 96d |  | Kruttik; Priyatam; Manav | 384h |
| 431 | 2.5.5.1.1 | Manage eligibility criteria | 5d | 2007-04-26 | 2007-05-02 | 409 | 96d |  | Kruttik; Priyatam; Manav | 120h |
| 432 | 2.5.5.1.2 | Manage multi-site study | 5d | 2007-04-25 | 2007-05-01 | 417 | 97d |  | Kruttik; Priyatam; Manav | 120h |

| ID | WBS | Task | Type | Duration | Start | Finish | Predecessors | Total slack | Free slack | Resources | Work |
| --- | --- | --- | --- | --- | --- | --- | --- | --- | --- | --- | --- |
| 433 | 2.5.5.2 | **Modify study personnel management interface** |  | 5d | 2007-04-25 | 2007-05-01 |  | 97d |  | Priyatam; Kula | 160h |
| 434 | 2.5.5.2.1 | Manage study personnel |  | 5d | 2007-04-25 | 2007-05-01 | 413 | 97d |  | Priyatam; Kula | 80h |
| 435 | 2.5.5.3 | **Modify registration interface** |  | 5d | 2007-04-26 | 2007-05-02 |  | 96d |  | Kruttik; Priyatam | 160h |
| 436 | 2.5.5.3.1 | Check eligibility |  | 5d | 2007-04-26 | 2007-05-02 | 409 | 96d | 0d | Kruttik; Priyatam | 80h |
| 437 | 2.5.5.4 | **Modify registration management interface** |  | 5d | 2007-04-12 | 2007-04-18 |  | 106d |  | Ramakrishna | 80h |
| 438 | 2.5.5.4.1 | Manage study subject registration |  | 5d | 2007-04-12 | 2007-04-18 |  | 106d |  | Ramakrishna | 40h |
| 439 | 2.5.6 | Deliver codebase to BAH (task 3.5.1) | milestone | 0d | 2007-05-02 | 2007-05-02 | 395, 429, 436 | 96d | 0d | Patrick |  |
| 440 | 2.5.7 | BAH review codebase (task 3.5.1) |  | 10d | 2007-05-03 | 2007-05-16 | 439 | 97d |  | BAH | 80h |
| 441 | 2.6 | **Testing** |  | 34d | 2007-04-02 | 2007-05-17 | 251 | 96d |  | Developers; Adopters; BAH | 5272h |
| 442 | 2.6.1 | **Developer testing** |  | 34d | 2007-04-02 | 2007-05-17 |  | 96d |  | BAH; Adopters; Developers | 2160h |
| 443 | 2.6.1.1 | **Update developer test plan (task 3.6.1, task 5.4.1)** |  | 30d | 2007-04-02 | 2007-05-11 |  | 100d |  | Developers; Adopters; BAH | 960h |
| 444 | 2.6.1.1.1 | Developer draft |  | 5d | 2007-04-02 | 2007-04-06 |  | 100d | 0d | Developers | 40h |
| 445 | 2.6.1.1.2 | Adopter review |  | 5d | 2007-04-09 | 2007-04-13 | 444 | 100d | 0d | Adopters | 40h |
| 446 | 2.6.1.1.3 | Developer update |  | 5d | 2007-04-16 | 2007-04-20 | 445 | 100d | 0d | Developers | 40h |
| 447 | 2.6.1.1.4 | Adopter review and sign |  | 5d | 2007-04-23 | 2007-04-27 | 446 | 100d | 0d | Adopters | 40h |
| 448 | 2.6.1.1.5 | Deliver signed test plan to BAH (task 3.6.1, task 5.4.1) | milestone | 0d | 2007-04-27 | 2007-04-27 | 447 | 100d | 0d | Patrick |  |
| 449 | 2.6.1.1.6 | BAH review signed test plan (task 3.6.1, task 5.4.1) |  | 10d | 2007-04-30 | 2007-05-11 | 448 | 100d |  | BAH | 80h |
| 450 | 2.6.1.2 | **Integration and system testing (task 3.8.1)** |  | 16d | 2007-04-26 | 2007-05-17 | 439FS-5d | 96d |  | Developers; BAH | 384h |
| 451 | 2.6.1.2.1 | Generate test data |  | 1d | 2007-04-26 | 2007-04-26 |  | 96d | 0d | Developers | 8h |
| 452 | 2.6.1.2.2 | Write tests |  | 3d | 2007-04-27 | 2007-05-01 | 451 | 96d | 0d | Developers | 24h |
| 453 | 2.6.1.2.3 | Validate tests |  | 1d | 2007-05-02 | 2007-05-02 | 452 | 96d | 0d | Developers | 8h |
| 454 | 2.6.1.2.4 | Generate test report |  | 1d | 2007-05-03 | 2007-05-03 | 453 | 96d | 0d | Developers | 8h |
| 455 | 2.6.1.2.5 | Deliver test report to BAH (task 3.8.1) | milestone | 0d | 2007-05-03 | 2007-05-03 | 454 | 96d | 0d | Patrick |  |
| 456 | 2.6.1.2.6 | BAH review test report (task 3.8.1) |  | 10d | 2007-05-04 | 2007-05-17 | 455 | 96d |  | BAH | 80h |

| ID | WBS | Task | Type | Duration | Start | Finish | Predecessors | Total slack | Free slack | Resources | Work |
| --- | --- | --- | --- | --- | --- | --- | --- | --- | --- | --- | --- |
| 457 | 2.6.2 | **Adopter testing** |  | 30d | 2007-04-02 | 2007-05-11 |  | 100d |  | Adopters; Developers; BAH | 2296h |
| 458 | 2.6.2.1 | **Update adopter test plan (task 5.5.1)** |  | 30d | 2007-04-02 | 2007-05-11 |  | 100d |  | Adopters; Developers; BAH | 1000h |
| 459 | 2.6.2.1.1 | Adopter update test script |  | 5d | 2007-04-02 | 2007-04-06 |  | 100d | 0d | Adopters | 40h |
| 460 | 2.6.2.1.2 | Adopter update test approach |  | 5d | 2007-04-09 | 2007-04-13 | 459 | 100d | 0d | Adopters | 40h |
| 461 | 2.6.2.1.3 | Developer review |  | 5d | 2007-04-16 | 2007-04-20 | 460 | 100d | 0d | Patrick; Ram | 80h |
| 462 | 2.6.2.1.4 | Adopter update |  | 5d | 2007-04-23 | 2007-04-27 | 461 | 100d | 0d | Adopters | 40h |
| 463 | 2.6.2.1.5 | Developer deliver adopter test plan to BAH (task 5.5.1) | milestone | 0d | 2007-04-27 | 2007-04-27 | 462 | 100d | 0d | Patrick |  |
| 464 | 2.6.2.1.6 | BAH review adopter test plan (task 5.5.1) |  | 10d | 2007-04-30 | 2007-05-11 | 463 | 100d |  | BAH | 80h |
| 465 | 2.6.2.2 | **QA testing (task 5.6.1)** |  | 24d | 2007-04-09 | 2007-05-10 | 459 | 101d |  | Adopters; BAH | 576h |
| 466 | 2.6.2.2.1 | Adopter create test data |  | 5d | 2007-04-09 | 2007-04-13 |  | 101d | 0d | Adopters | 40h |
| 467 | 2.6.2.2.2 | Adopter perform test script |  | 5d | 2007-04-16 | 2007-04-20 | 466 | 101d | 0d | Adopters | 40h |
| 468 | 2.6.2.2.3 | Adopter document results |  | 2d | 2007-04-23 | 2007-04-24 | 467 | 101d | 0d | Adopters | 16h |
| 469 | 2.6.2.2.4 | Adopter log bugs |  | 2d | 2007-04-25 | 2007-04-26 | 468 | 101d | 0d | Adopters | 16h |
| 470 | 2.6.2.2.5 | Developer deliver adopter test report to BAH (task 5.6.1) | milestone | 0d | 2007-04-26 | 2007-04-26 | 468, 469 | 101d | 0d | Patrick |  |
| 471 | 2.6.2.2.6 | BAH review adopter test report (task 5.6.1) |  | 10d | 2007-04-27 | 2007-05-10 | 470 | 101d |  | BAH | 80h |
| 472 | 2.7 | **Documentation** |  | 15d | 2007-04-26 | 2007-05-16 | 251 | 97d |  | Developers; Adopters; BAH | 1656h |
| 473 | 2.7.1 | **Installation guide (task 3.10.1)** |  | 13d | 2007-04-30 | 2007-05-16 | 439FS-3d | 97d |  | Developers; BAH | 312h |
| 474 | 2.7.1.1 | Update installation guide |  | 3d | 2007-04-30 | 2007-05-02 |  | 97d | 0d | Developers | 24h |
| 475 | 2.7.1.2 | Deliver installation guide to BAH (task 3.10.1) | milestone | 0d | 2007-05-02 | 2007-05-02 | 474 | 97d | 0d | Patrick |  |
| 476 | 2.7.1.3 | BAH review of installation guide (task 3.10.1) |  | 10d | 2007-05-03 | 2007-05-16 | 475 | 97d |  | BAH | 80h |
| 477 | 2.7.2 | **Administration guide (task 3.13.1)** |  | 13d | 2007-04-30 | 2007-05-16 | 439FS-3d | 97d |  | Developers; BAH | 312h |
| 478 | 2.7.2.1 | Update administration guide |  | 3d | 2007-04-30 | 2007-05-02 |  | 97d | 0d | Developers | 24h |
| 479 | 2.7.2.2 | Deliver administration guide to BAH (task 3.13.1) | milestone | 0d | 2007-05-02 | 2007-05-02 | 478 | 97d | 0d | Patrick |  |
| 480 | 2.7.2.3 | BAH review of administration guide (task 3.13.1) |  | 10d | 2007-05-03 | 2007-05-16 | 479 | 97d |  | BAH | 80h |

| ID | WBS | Task | Type | Duration | Start | Finish | Predecessors | Total slack | Free slack | Constraint | Resources | Work |
| --- | --- | --- | --- | --- | --- | --- | --- | --- | --- | --- | --- | --- |
| 481 | 2.7.3 | **Release notes (task 3.14.1)** |  | 13d | 2007-04-30 | 2007-05-16 | 439FS-3d | 97d |  |  | Developers; BAH | 312h |
| 482 | 2.7.3.1 | Update release notes |  | 3d | 2007-04-30 | 2007-05-02 |  | 97d | 0d |  | Developers | 24h |
| 483 | 2.7.3.2 | Deliver release notes to BAH (task 3.14.1) | milestone | 0d | 2007-05-02 | 2007-05-02 | 482 | 97d | 0d |  | Patrick |  |
| 484 | 2.7.3.3 | BAH review of release notes (task 3.14.1) |  | 10d | 2007-05-03 | 2007-05-16 | 483 | 97d |  |  | BAH | 80h |
| 485 | 2.7.4 | **Adopter summary of C3PR (task 5.1.1)** |  | 15d | 2007-04-26 | 2007-05-16 | 439FS-5d | 97d |  |  | Adopters; BAH | 360h |
| 486 | 2.7.4.1 | Adopter update summary |  | 3d | 2007-04-26 | 2007-04-30 |  | 97d | 0d |  | Adopters | 24h |
| 487 | 2.7.4.2 | Developer review summary |  | 1d | 2007-05-01 | 2007-05-01 | 486 | 97d | 0d |  | Adopters | 8h |
| 488 | 2.7.4.3 | Adopter update summary |  | 1d | 2007-05-02 | 2007-05-02 | 487 | 97d | 0d |  | Adopters | 8h |
| 489 | 2.7.4.4 | Developer deliver C3PR summary to BAH (task 5.1.1) | milestone | 0d | 2007-05-02 | 2007-05-02 | 488 | 97d | 0d |  | Patrick |  |
| 490 | 2.7.4.5 | BAH review of C3PR summary (task 5.1.1) |  | 10d | 2007-05-03 | 2007-05-16 | 489 | 97d |  |  | BAH | 80h |
| 491 | 3 | **Iteration 3 (stratification, security, enrollment. multi-site study)** |  | 22d | 2007-05-02 | 2007-05-31 |  | 86d |  |  |  |  |
| 492 | 3.1 | Iteration start | milestone | 0d | 2007-05-02 | 2007-05-02 |  | 86d | 0d | start no earlier than 2007-05-02 |  |  |
| 493 | 3.2 | **Stratification** |  | 22d | 2007-05-02 | 2007-05-31 | 492 | 86d |  |  |  |  |
| 494 | 3.2.1 | First pass at stratification implementation |  | 22d | 2007-05-02 | 2007-05-31 |  | 86d |  |  |  |  |
| 495 | 3.3 | **Security** |  | 22d | 2007-05-02 | 2007-05-31 | 492 | 86d |  |  |  |  |
| 496 | 3.3.1 | Complete security implementation |  | 22d | 2007-05-02 | 2007-05-31 |  | 86d |  |  |  |  |
| 497 | 3.4 | **Enrollment** |  | 22d | 2007-05-02 | 2007-05-31 | 492 | 86d |  |  |  |  |
| 498 | 3.4.1 | **Enrollment details** |  | 22d | 2007-05-02 | 2007-05-31 | 492 | 86d |  |  |  |  |
| 499 | 3.4.1.1 | Treating MD |  | 22d | 2007-05-02 | 2007-05-31 |  | 86d |  |  |  |  |
| 500 | 3.4.1.2 | Disease |  | 22d | 2007-05-02 | 2007-05-31 |  | 86d |  |  |  |  |
| 501 | 3.4.1.3 | Compassionate |  | 22d | 2007-05-02 | 2007-05-31 |  | 86d |  |  |  |  |
| 502 | 3.4.2 | **Enrollment business rules** |  | 22d | 2007-05-02 | 2007-05-31 |  | 86d |  |  |  |  |
| 503 | 3.4.2.1 | Accrual ceilings |  | 22d | 2007-05-02 | 2007-05-31 |  | 86d |  |  |  |  |
| 504 | 3.4.2.2 | Notifications |  | 22d | 2007-05-02 | 2007-05-31 |  | 86d |  |  |  |  |

| ID | WBS | Task | Type | Duration | Start | Finish | Predecessors | Total slack | Free slack | Constraint |
| --- | --- | --- | --- | --- | --- | --- | --- | --- | --- | --- |
| 505 | 3.5 | **Multi-site study** |  | 22d | 2007-05-02 | 2007-05-31 | 492 | 86d |  |  |
| 506 | 3.5.1 | Complete multi-site study implementation |  | 22d | 2007-05-02 | 2007-05-31 |  | 86d |  |  |
| 507 | 3.6 | **Registration management** |  | 22d | 2007-05-02 | 2007-05-31 | 492 | 86d |  |  |
| 508 | 3.6.1 | Off study |  | 22d | 2007-05-02 | 2007-05-31 |  | 86d |  |  |
| 509 | 4 | **Iteration 4 (stratification, enrollment, randomization, reporting, legacy systems)** |  | 21d | 2007-06-01 | 2007-06-29 |  | 65d |  |  |
| 510 | 4.1 | Iteration start | milestone | 0d | 2007-06-01 | 2007-06-01 |  | 65d | 0d | start no earlier than 2007-06-01 |
| 511 | 4.2 | **Stratification** |  | 21d | 2007-06-01 | 2007-06-29 | 510 | 65d |  |  |
| 512 | 4.2.1 | Finalize stratification implementation |  | 21d | 2007-06-01 | 2007-06-29 |  | 65d |  |  |
| 513 | 4.3 | **Enrollment** |  | 21d | 2007-06-01 | 2007-06-29 | 510 | 65d |  |  |
| 514 | 4.3.1 | **Enrollment details** |  | 21d | 2007-06-01 | 2007-06-29 |  | 65d |  |  |
| 515 | 4.3.1.1 | Finalize enrollment details |  | 21d | 2007-06-01 | 2007-06-29 |  | 65d |  |  |
| 516 | 4.3.2 | **Enrollment business rules** |  | 21d | 2007-06-01 | 2007-06-29 |  | 65d |  |  |
| 517 | 4.3.2.1 | Finalize enrollment business rules |  | 21d | 2007-06-01 | 2007-06-29 |  | 65d |  |  |
| 518 | 4.4 | **Randomization** |  | 21d | 2007-06-01 | 2007-06-29 | 510 | 65d |  |  |
| 519 | 4.4.1 | Randomization book |  | 21d | 2007-06-01 | 2007-06-29 |  | 65d |  |  |
| 520 | 4.5 | **Reporting** |  | 21d | 2007-06-01 | 2007-06-29 | 510 | 65d |  |  |
| 521 | 4.5.1 | Reporting interface |  | 21d | 2007-06-01 | 2007-06-29 |  | 65d |  |  |
| 522 | 4.6 | **Legacy systems** |  | 21d | 2007-06-01 | 2007-06-29 | 510 | 65d |  |  |
| 523 | 4.6.1 | Investigate legacy systems at Adopter sites |  | 21d | 2007-06-01 | 2007-06-29 |  | 65d |  |  |
| 524 | 4.6.2 | Investigate support of legacy systems (APIs, files, etc.) |  | 21d | 2007-06-01 | 2007-06-29 |  | 65d |  |  |
| 525 | 5 | **Iteration 5 (randomization, reporting, legacy systems)** |  | 22d | 2007-07-02 | 2007-07-31 |  | 43d |  |  |
| 526 | 5.1 | Iteration start | milestone | 0d | 2007-07-02 | 2007-07-02 |  | 43d | 0d | start no earlier than 2007-07-02 |
| 527 | 5.2 | **Randomization** |  | 22d | 2007-07-02 | 2007-07-31 | 526 | 43d |  |  |
| 528 | 5.2.1 | Randomization email |  | 22d | 2007-07-02 | 2007-07-31 |  | 43d |  |  |

| ID | WBS | Task | Type | Duration | Start | Finish | Predecessors | Total slack | Free slack | Constraint |
| --- | --- | --- | --- | --- | --- | --- | --- | --- | --- | --- |
| 529 | 5.3 | **Reporting** |  | 22d | 2007-07-02 | 2007-07-31 | 526 | 43d |  |  |
| 530 | 5.3.1 | Storing reports |  | 22d | 2007-07-02 | 2007-07-31 |  | 43d |  |  |
| 531 | 5.4 | **Legacy systems** |  | 22d | 2007-07-02 | 2007-07-31 | 526 | 43d |  |  |
| 532 | 5.4.1 | Implement legacy support for adopters |  | 22d | 2007-07-02 | 2007-07-31 |  | 43d |  |  |
| 533 | 5.4.2 | Implement generic support for legacy systems |  | 22d | 2007-07-02 | 2007-07-31 |  | 43d |  |  |
| 534 | 6 | **Iteration 6 (randomization, reporting, legacy systems)** |  | 23d | 2007-08-01 | 2007-08-31 |  | 20d |  |  |
| 535 | 6.1 | Iteration start | milestone | 0d | 2007-08-01 | 2007-08-01 |  | 20d | 0d | start no earlier than 2007-08-01 |
| 536 | 6.2 | **Randomization** |  | 23d | 2007-08-01 | 2007-08-31 | 535 | 20d |  |  |
| 537 | 6.2.1 | Randomization call-out |  | 23d | 2007-08-01 | 2007-08-31 |  | 20d |  |  |
| 538 | 6.3 | **Reporting** |  | 23d | 2007-08-01 | 2007-08-31 | 535 | 20d |  |  |
| 539 | 6.3.1 | Finalize reporting |  | 23d | 2007-08-01 | 2007-08-31 |  | 20d |  |  |
| 540 | 6.4 | **Legacy systems** |  | 23d | 2007-08-01 | 2007-08-31 | 535 | 20d |  |  |
| 541 | 6.4.1 | Finalize legacy systems |  | 23d | 2007-08-01 | 2007-08-31 |  | 20d |  |  |
| 542 | 7 | **Iteration 7 (installer)** |  | 0d | 2007-09-03 | 2007-09-03 |  | 20d |  |  |
| 543 | 7.1 | Iteration start | milestone | 0d | 2007-09-03 | 2007-09-03 |  | 20d |  | start no earlier than 2007-09-03 |
| 544 | 8 | **Iteration 8** |  | 0d | 2007-10-01 | 2007-10-01 |  | 0d |  |  |
| 545 | 8.1 | Iteration start | milestone | 0d | 2007-10-01 | 2007-10-01 |  | 0d |  | start no earlier than 2007-10-01 |
